# ProyectoABP

Schedule from MS Project, 2016-09-12 to 2017-05-26, 10 hours a day, costs in €, A marks actual dates.
UA

## Calendars

- Estándar: Mon-Fri 09:00-13:00, 15:00-19:00; Sat-Sun off. Exceptions (off unless hours are given): 2016-11-19 09:00-13:00, 15:00-19:00, 2016-12-24 09:00-13:00, 15:00-19:00, 2017-01-28 09:00-13:00, 15:00-19:00.

## Resources

| Resource | Rate |
| --- | --- |
| Nahiara | 10 |
| Manuel | 10 |
| Ricardo | 10 |
| Antonio | 10 |
| Jorge | 10 |

## Schedule

| ID | WBS | Task | Duration | Start | Finish | Predecessors | Complete | Remaining | Total slack | Free slack | Constraint | Resources | Work | Cost |
| --- | --- | --- | --- | --- | --- | --- | --- | --- | --- | --- | --- | --- | --- | --- |
| 2 | 1 | **HITO 0** | 22.4d? | 2016-09-12 09:00 A | 2016-10-19 19:00 |  | 64% | 8.07d? | 13d | 0d |  |  |  |  |
| 3 | 1.1 | **PM** | 22.4d? | 2016-09-12 09:00 | 2016-10-19 19:00 |  |  |  | 13d |  |  |  |  |  |
| 4 | 1.1.1 | Rellenar documentos de proyecto | 10.4d? | 2016-09-12 09:00 | 2016-09-28 19:00 |  |  |  | 13d | 0d | start no earlier than 2016-09-12 09:00 |  |  |  |
| 5 | 1.1.2 | Rellenar hoja de presupuesto | 4d? | 2016-09-29 09:00 | 2016-10-05 19:00 | 4 |  |  | 13d | 0d | finish no earlier than 2016-10-05 19:00 |  |  |  |
| 6 | 1.1.3 | Hacer project | 8d? | 2016-10-06 09:00 | 2016-10-19 19:00 | 5 |  |  | 13d |  | start no earlier than 2016-10-06 09:00 |  |  |  |
| 7 | 1.2 | **SMBI** | 22.4d? | 2016-09-12 09:00 A | 2016-10-19 19:00 |  | 73% | 6.03d? | 13d |  |  |  |  |  |
| 8 | 1.2.1 | Diseño integral de la arquitectura técnica | 22.4d? | 2016-09-12 09:00 A | 2016-10-19 19:00 |  | 73% | 6.03d? | 13d |  | start no earlier than 2016-09-12 09:00 |  |  |  |
| 9 | 1.2.2 | Especificación de elementos y tecnologías de seguridad y autenticación | 22.4d? | 2016-09-12 09:00 A | 2016-10-19 19:00 |  | 73% | 6.03d? | 13d |  | finish no earlier than 2016-10-19 19:00 |  |  |  |
| 10 | 1.2.3 | Especificación de API Rest y modelo de datos | 22.4d? | 2016-09-12 09:00 A | 2016-10-19 19:00 |  | 73% | 6.03d? | 13d |  | finish no earlier than 2016-10-19 19:00 |  |  |  |
| 11 | 1.3 | **SMA** | 22.4d? | 2016-09-12 09:00 A | 2016-10-19 19:00 |  | 73% | 6.03d? | 13d |  |  |  |  |  |
| 12 | 1.3.1 | Diseño funcional: documentación con la especificación de todas las funcionalidades del sistema | 22.4d? | 2016-09-12 09:00 A | 2016-10-19 19:00 |  | 73% | 6.03d? | 13d |  | start no earlier than 2016-09-12 09:00 |  |  |  |
| 13 | 1.3.2 | Diseño de baja fidelidad de interfaces(mockups): documentación con todas las interfaces diseñadas mediante mockups | 22.4d? | 2016-09-12 09:00 A | 2016-10-19 19:00 |  | 73% | 6.03d? | 13d |  | start no earlier than 2016-09-12 09:00 |  |  |  |
| 14 | 1.4 | **NM** | 22.4d? | 2016-09-12 09:00 A | 2016-10-19 19:00 |  | 73% | 6.03d? | 13d |  |  |  |  |  |
| 15 | 1.4.1 | Diseño funcional y visualización del proyecto: documentación con la especificación de todas las funcionalidades del sistema | 22.4d? | 2016-09-12 09:00 A | 2016-10-19 19:00 |  | 73% | 6.03d? | 13d |  | start no earlier than 2016-09-12 09:00 |  |  |  |
| 16 | 1.4.2 | Especificación y visualización de elementos y tecnologías a utilizar, por ejemplo mediante la definición de una infografía del proyecto | 22.4d? | 2016-09-12 09:00 A | 2016-10-19 19:00 |  | 73% | 6.03d? | 13d |  | start no earlier than 2016-09-12 09:00 |  |  |  |
| 18 | 2 | **HITO 1** | 37d | 2016-10-20 09:00 | 2016-12-22 11:00 | 2 |  |  | 13d |  |  |  | 386h | 3,860 |
| 19 | 2.1 | **Iteración 1** | 4.7d | 2016-10-20 09:00 | 2016-10-27 18:00 | 2 |  |  | 10.9d | 3.3d |  |  | 55h | 550 |
| 20 | 2.1.1 | **PM** | 1.1d | 2016-10-20 09:00 | 2016-10-21 12:00 |  |  |  | 14.5d |  |  |  | 11h | 110 |
| 21 | 2.1.1.1 | **Planificación** | 1.1d | 2016-10-20 09:00 | 2016-10-21 12:00 |  |  |  | 14.5d |  |  |  | 11h | 110 |
| 22 | 2.1.1.1.1 | Detallar plan iteraciones del mes de Noviembre | 5h | 2016-10-20 09:00 | 2016-10-20 16:00 |  |  |  | 14.5d | 0d |  | Nahiara | 5h | 50 |
| 23 | 2.1.1.1.2 | Creación Subtareas y precedencias en Project | 6h | 2016-10-20 16:00 | 2016-10-21 12:00 | 22 |  |  | 14.5d |  |  | Nahiara | 6h | 60 |
| 24 | 2.1.2 | **SMBI** | 0.3d | 2016-10-24 16:00 | 2016-10-24 19:00 |  |  |  | 10.9d |  |  |  | 9h | 90 |
| 25 | 2.1.2.1 | Diseñar diagrama preliminar del Modelo de BD | 3h | 2016-10-24 16:00 | 2016-10-24 19:00 |  |  |  | 10.9d | 0d | finish no earlier than 2016-10-24 19:00 | Antonio; Manuel; Nahiara | 9h | 90 |
| 26 | 2.1.3 | **PD** | 2.3d | 2016-10-25 09:00 | 2016-10-27 18:00 |  |  |  | 10.9d |  |  |  | 31h | 310 |
| 27 | 2.1.3.1 | Diseño logo | 8h | 2016-10-25 09:00 | 2016-10-25 19:00 | 25 |  |  | 10.9d | 0d |  | Antonio; Manuel | 16h | 160 |
| 28 | 2.1.3.2 | Crear video de logo | 15h | 2016-10-26 09:00 | 2016-10-27 18:00 | 27 |  |  | 10.9d |  |  | Antonio | 15h | 150 |

| ID | WBS | Task | Duration | Start | Finish | Predecessors | Total slack | Free slack | Constraint | Resources | Work | Cost |
| --- | --- | --- | --- | --- | --- | --- | --- | --- | --- | --- | --- | --- |
| 29 | 2.1.4 | **Otras tareas** | 0.4d | 2016-10-25 09:00 | 2016-10-25 13:00 |  | 12.8d |  |  |  | 4h | 40 |
| 30 | 2.1.4.1 | Corregir diagramas Caso de uso | 4h | 2016-10-25 09:00 | 2016-10-25 13:00 | 25 | 12.8d |  |  | Nahiara | 4h | 40 |
| 31 | 2.2 | **Iteración 2** | 7.75d | 2016-11-03 09:00 | 2016-11-16 16:30 | 19 | 1.05d | 0.25d |  |  | 74h | 740 |
| 32 | 2.2.1 | **PM** | 6.75d | 2016-11-03 09:00 | 2016-11-15 12:30 |  | 2.05d |  |  |  | 10.5h | 105 |
| 33 | 2.2.1.1 | Ordenar tareas por iteraciones | 5h | 2016-11-03 09:00 | 2016-11-03 16:00 |  | 7.7d | 5.7d | start no earlier than 2016-11-03 09:00 | Nahiara | 5h | 50 |
| 34 | 2.2.1.2 | **Seguimiento** | 0.35d | 2016-11-15 09:00 | 2016-11-15 12:30 |  | 1.2d |  |  |  | 5.5h | 55 |
| 35 | 2.2.1.2.1 | Registrar de tiempos y % de realización de tareas en Project | 1h | 2016-11-15 09:00 | 2016-11-15 10:00 |  | 2.2d | 0d | start no earlier than 2016-11-15 09:00 | Nahiara | 1h | 10 |
| 36 | 2.2.1.2.2 | Comparar la planificación prevista y real en Project hito 1. | 1h | 2016-11-15 10:00 | 2016-11-15 11:00 | 35 | 2.2d |  | start no earlier than 2016-11-15 09:00 | Nahiara | 1h | 10 |
| 37 | 2.2.1.2.3 | Confeccionar Informes de iteración e informe resumen de Hito 1 | 3.5h | 2016-11-15 09:00 | 2016-11-15 12:30 |  | 1.2d | 0d | start no earlier than 2016-11-15 09:00 | Ricardo | 3.5h | 35 |
| 38 | 2.2.2 | **SDM** | 2.95d | 2016-11-11 09:00 | 2016-11-16 16:30 |  | 1.05d |  |  |  | 32.5h | 325 |
| 39 | 2.2.2.1 | Actualizar Lean Canvas | 2h | 2016-11-14 09:00 | 2016-11-14 11:00 | 46 | 3d |  | start no earlier than 2016-11-14 09:00 | Manuel | 2h | 20 |
| 40 | 2.2.2.2 | Actualizar Presupuesto SDM y ELE | 2.5h | 2016-11-16 12:00 | 2016-11-16 16:30 | 48 | 1.05d |  | start no earlier than 2016-11-15 09:00 | Nahiara | 2.5h | 25 |
| 41 | 2.2.2.3 | **Hacer Documento de Especificacion** | 2.25d | 2016-11-11 09:00 | 2016-11-15 17:30 |  | 1.75d |  |  |  | 19h | 190 |
| 42 | 2.2.2.3.1 | **Definir objetivo SDM** | 2.25d | 2016-11-11 09:00 | 2016-11-15 17:30 |  | 1.75d |  |  |  | 19h | 190 |
| 43 | 2.2.2.3.1.1 | Explicar CMS en nuestro proyecto | 2h | 2016-11-14 17:00 | 2016-11-14 19:00 | 33 | 2d | 0d | finish no earlier than 2016-11-14 19:00 | Nahiara | 2h | 20 |
| 44 | 2.2.2.3.1.2 | Explicar Difusion y Posicionamiento Web de nuestro proyecto | 3h | 2016-11-14 17:00 | 2016-11-15 10:00 |  | 2.3d |  | start no earlier than 2016-11-14 17:00 | Jorge | 3h | 30 |
| 45 | 2.2.2.3.1.3 | Explicar transformación de formatos en el proyecto | 4h | 2016-11-15 09:00 | 2016-11-15 13:00 | 43 | 2d |  | start no earlier than 2016-11-14 17:00 | Nahiara | 4h | 40 |
| 46 | 2.2.2.3.1.4 | Definir API's de terceros y propios a usar en el proyecto | 7h | 2016-11-11 09:00 | 2016-11-11 18:00 |  | 3.1d | 0.1d | start no earlier than 2016-11-11 09:00 | Manuel | 7h | 70 |
| 47 | 2.2.2.3.1.5 | Explicar uso de OAuth2.0(Delegar autorizacion) | 3h | 2016-11-15 12:30 | 2016-11-15 17:30 | 37 | 1.2d | 0.15d | start no earlier than 2016-11-14 17:00 | Ricardo | 3h | 30 |
| 48 | 2.2.2.4 | Hacer PowerPoint | 3h | 2016-11-16 09:00 | 2016-11-16 12:00 | 47 | 1.05d | 0d | start no earlier than 2016-11-16 09:00 | Jorge; Manuel; Nahiara | 9h | 90 |
| 49 | 2.2.3 | **SMA** | 1.2d | 2016-11-08 09:00 | 2016-11-09 13:00 |  | 5.2d |  |  |  | 24h | 240 |
| 50 | 2.2.3.1 | Hacer nuevos Mockups | 12h | 2016-11-08 09:00 | 2016-11-09 13:00 |  | 5.2d |  | start no earlier than 2016-11-08 09:00 | Jorge; Ricardo | 24h | 240 |
| 51 | 2.2.4 | **NM** | 0.35d | 2016-11-07 09:00 | 2016-11-07 12:30 |  | 6.85d |  |  |  | 7h | 70 |
| 52 | 2.2.4.1 | Definir metricas | 3.5h | 2016-11-07 09:00 | 2016-11-07 12:30 |  | 6.85d |  | start no earlier than 2016-11-07 09:00 | Ricardo | 3.5h | 35 |
| 53 | 2.2.4.2 | Especificar elementos y tecnologías a utilizar | 3.5h | 2016-11-07 09:00 | 2016-11-07 12:30 |  | 6.85d |  | start no earlier than 2016-11-07 09:00 | Manuel | 3.5h | 35 |

| ID | WBS | Task | Duration | Start | Finish | Predecessors | Total slack | Free slack | Constraint | Resources | Work | Cost |
| --- | --- | --- | --- | --- | --- | --- | --- | --- | --- | --- | --- | --- |
| 54 | 2.3 | **Iteración 3** | 8.8d | 2016-11-17 09:00 | 2016-11-30 19:00 | 31 | 0d |  |  |  | 149h | 1,490 |
| 55 | 2.3.1 | **PM** | 8d | 2016-11-18 09:00 | 2016-11-30 19:00 |  | 0d |  |  |  | 26h | 260 |
| 56 | 2.3.1.1 | **Documento de Planificación** | 6.3d | 2016-11-18 09:00 | 2016-11-28 18:00 |  | 1.7d |  |  |  | 21.5h | 215 |
| 57 | 2.3.1.1.1 | Hacer aparatado de Propósito | 2h | 2016-11-18 09:00 | 2016-11-18 11:00 |  | 7.4d | 0d | start no earlier than 2016-11-18 09:00 | Antonio | 2h | 20 |
| 58 | 2.3.1.1.2 | Hacer aparatado de Análisis de riesgos | 4h | 2016-11-18 11:00 | 2016-11-18 17:00 | 57 | 7.4d |  | start no earlier than 2016-11-18 09:00 | Antonio | 4h | 40 |
| 59 | 2.3.1.1.3 | Revisar y añadir Análisis de riesgos | 4h | 2016-11-28 09:00 | 2016-11-28 13:00 |  | 1.7d | 0d | start no earlier than 2016-11-28 09:00 | Nahiara | 4h | 40 |
| 60 | 2.3.1.1.4 | Hacer aparatado de Estimación de costes | 3h | 2016-11-18 09:00 | 2016-11-18 12:00 |  | 7.7d |  | start no earlier than 2016-11-18 09:00 | Manuel | 3h | 30 |
| 61 | 2.3.1.1.5 | Hacer aparatado de Agenda del proyecto | 3h | 2016-11-18 16:00 | 2016-11-18 19:00 |  | 7.2d |  | start no earlier than 2016-11-18 16:00 | Ricardo | 3h | 30 |
| 62 | 2.3.1.1.6 | Revisar y modificar Agenda del proyecto | 3h | 2016-11-28 15:00 | 2016-11-28 18:00 | 59 | 1.7d |  |  | Nahiara | 3h | 30 |
| 63 | 2.3.1.1.7 | Hacer aparatado de Mecanismos de seguimiento y control | 2.5h | 2016-11-18 16:00 | 2016-11-18 18:30 |  | 6.85d | 5.25d | start no earlier than 2016-11-18 16:00 | Jorge | 2.5h | 25 |
| 64 | 2.3.1.2 | **Seguimiento** | 1.6d | 2016-11-29 09:00 | 2016-11-30 19:00 |  | 0d |  |  |  | 4.5h | 45 |
| 65 | 2.3.1.2.1 | Registrar de tiempos y % de realización de tareas en Project | 1h | 2016-11-29 09:00 | 2016-11-29 10:00 |  | 1.5d |  | start no earlier than 2016-11-29 09:00 | Nahiara | 1h | 10 |
| 66 | 2.3.1.2.2 | Comparar la planificación prevista y real en Project hito 1. | 1h | 2016-11-30 18:00 | 2016-11-30 19:00 |  | 0d |  | finish no earlier than 2016-11-30 19:00 | Nahiara | 1h | 10 |
| 67 | 2.3.1.2.3 | Confeccionar Informes de iteración e informe resumen de Hito 1 | 2.5h | 2016-11-30 16:30 | 2016-11-30 19:00 |  | 0d |  | finish no earlier than 2016-11-30 19:00 | Nahiara | 2.5h | 25 |
| 68 | 2.3.2 | **SMBI** | 8.8d | 2016-11-17 09:00 | 2016-11-30 19:00 |  | 0d |  |  |  | 112h | 1,120 |
| 69 | 2.3.2.1 | **Infraestructura** | 2.4d | 2016-11-17 09:00 | 2016-11-19 19:00 |  | 0.2d |  |  |  | 50h | 500 |
| 70 | 2.3.2.1.1 | Instalar los elementos de backend y seguridad | 8h | 2016-11-17 09:00 | 2016-11-17 19:00 |  | 0.8d | 0.6d | start no earlier than 2016-11-17 09:00 | Antonio; Jorge; Manuel; Nahiara; Ricardo | 40h | 400 |
| 71 | 2.3.2.1.2 | Configurar de los elementos de backend y seguridad | 10h | 2016-11-18 17:00 | 2016-11-19 19:00 | 70 | 0.2d |  | finish no earlier than 2016-11-19 19:00 | Antonio | 10h | 100 |
| 72 | 2.3.2.2 | **Investigación** | 6.2d | 2016-11-21 11:00 | 2016-11-30 19:00 |  | 0d |  |  |  | 62h | 620 |
| 73 | 2.3.2.2.1 | Investigar sobre las tecnologías a usar y lenguaje de programación del backend | 62h | 2016-11-21 11:00 | 2016-11-30 19:00 | 71 | 0d |  | finish no earlier than 2016-11-30 19:00 | Antonio | 62h | 620 |
| 74 | 2.3.3 | **SMA** | 0.4d | 2016-11-28 15:00 | 2016-11-28 19:00 |  | 1.6d |  |  |  | 4h | 40 |
| 75 | 2.3.3.1 | **Diagrama de flujo de interfaces** | 0.4d | 2016-11-28 15:00 | 2016-11-28 19:00 |  | 1.6d |  |  |  | 4h | 40 |
| 76 | 2.3.3.1.1 | Definir interfaces y navegacion entre ellas | 4h | 2016-11-28 15:00 | 2016-11-28 19:00 | 63 | 1.6d |  | finish no earlier than 2016-11-28 19:00 | Jorge | 4h | 40 |
| 77 | 2.3.4 | **NM** | 0.4d | 2016-11-21 09:00 | 2016-11-21 13:00 |  | 5.7d |  |  |  | 4h | 40 |
| 78 | 2.3.4.1 | **Definición** | 0.4d | 2016-11-21 09:00 | 2016-11-21 13:00 |  | 5.7d |  |  |  | 4h | 40 |
| 79 | 2.3.4.1.1 | Definir indicadores principales del proyecto | 4h | 2016-11-21 09:00 | 2016-11-21 13:00 | 70 | 5.7d | 0d | start no earlier than 2016-11-21 09:00 | Ricardo | 4h | 40 |

| ID | WBS | Task | Duration | Start | Finish | Predecessors | Total slack | Free slack | Constraint | Resources | Work | Cost |
| --- | --- | --- | --- | --- | --- | --- | --- | --- | --- | --- | --- | --- |
| 80 | 2.3.5 | **ELE** | 0.3d | 2016-11-21 15:00 | 2016-11-21 18:00 |  | 5.7d |  |  |  | 3h | 30 |
| 81 | 2.3.5.1 | **Tarea 1** | 0.3d | 2016-11-21 15:00 | 2016-11-21 18:00 |  | 5.7d |  |  |  | 3h | 30 |
| 82 | 2.3.5.1.1 | Realizar MOOC y Lean Canvas | 3h | 2016-11-21 15:00 | 2016-11-21 18:00 | 79 | 5.7d |  | start no earlier than 2016-11-17 09:00 | Ricardo | 3h | 30 |
| 83 | 2.4 | **Iteracion 4** | 7.4d | 2016-12-01 09:00 | 2016-12-14 11:00 | 54 | 0d |  |  |  | 88h | 880 |
| 84 | 2.4.1 | **PM** | 1d | 2016-12-13 09:00 | 2016-12-14 11:00 |  | 94.8d |  |  |  | 10h | 100 |
| 85 | 2.4.1.1 | **Seguimiento** | 0.6d | 2016-12-13 09:00 | 2016-12-13 17:00 |  | 94.8d |  |  |  | 6h | 60 |
| 86 | 2.4.1.1.1 | Registrar de tiempos y % de realización de tareas en Project | 2h | 2016-12-13 09:00 | 2016-12-13 11:00 |  | 94.8d | 0d | start no earlier than 2016-12-13 09:00 | Nahiara | 2h | 20 |
| 87 | 2.4.1.1.2 | Comparar la planificación prevista y real en Project hito 1. | 2h | 2016-12-13 11:00 | 2016-12-13 13:00 | 86 | 94.8d | 0d | start no earlier than 2016-12-01 09:00 | Nahiara | 2h | 20 |
| 88 | 2.4.1.1.3 | Confeccionar Informes de iteración e informe resumen de Hito 1 | 2h | 2016-12-13 15:00 | 2016-12-13 17:00 | 87 | 94.8d | 0d | start no earlier than 2016-12-01 09:00 | Nahiara | 2h | 20 |
| 89 | 2.4.1.2 | **Ejercicio Propuesto** | 0.4d | 2016-12-13 17:00 | 2016-12-14 11:00 |  | 94.8d |  |  |  | 4h | 40 |
| 90 | 2.4.1.2.1 | Aplicar el modelo EVA en Project | 4h | 2016-12-13 17:00 | 2016-12-14 11:00 | 88 | 94.8d |  |  | Nahiara | 4h | 40 |
| 91 | 2.4.2 | **SMBI** | 3.6d | 2016-12-06 15:00 | 2016-12-12 19:00 |  | 95.8d |  |  |  | 68h | 680 |
| 92 | 2.4.2.1 | **Investigación** | 1.2d | 2016-12-06 15:00 | 2016-12-07 19:00 |  | 95.8d | 0d |  |  | 12h | 120 |
| 93 | 2.4.2.1.1 | Investigar sobre las tecnologías a usar y lenguaje de programación del backend | 12h | 2016-12-06 15:00 | 2016-12-07 19:00 |  | 95.8d | 0d | finish no earlier than 2016-12-07 19:00 | Antonio | 12h | 120 |
| 94 | 2.4.2.2 | **Configuración de los elemenos de backend** | 1.4d | 2016-12-08 09:00 | 2016-12-09 17:00 | 92 | 95.8d | 0d |  |  | 26h | 260 |
| 95 | 2.4.2.2.1 | Diseñar BBDD - Primer diseño | 3h | 2016-12-08 09:00 | 2016-12-08 12:00 |  | 96.9d | 1.1d | start no earlier than 2016-12-01 09:00 | Ricardo | 3h | 30 |
| 96 | 2.4.2.2.2 | Diseñar BBDD - Segundo diseño | 3h | 2016-12-08 09:00 | 2016-12-08 12:00 |  | 96.9d | 1.1d | start no earlier than 2016-12-05 09:00 | Nahiara | 3h | 30 |
| 97 | 2.4.2.2.3 | Diseñar BBDD - Definitivo | 6h | 2016-12-08 09:00 | 2016-12-08 17:00 |  | 96.6d | 0.8d | start no earlier than 2016-12-06 09:00 | Manuel | 6h | 60 |
| 98 | 2.4.2.2.4 | Gestionar la transaccionalidad de la BD con lenguaje Java | 14h | 2016-12-08 09:00 | 2016-12-09 17:00 | 93 | 95.8d | 0d | start no earlier than 2016-12-02 09:00 | Antonio | 14h | 140 |
| 99 | 2.4.2.3 | **Integracion modelos MySQL en JAVA** | 1d | 2016-12-09 17:00 | 2016-12-12 19:00 | 94 | 95.8d |  |  |  | 30h | 300 |
| 100 | 2.4.2.3.1 | Investigar e Integrar tablas asignadas | 10h | 2016-12-09 17:00 | 2016-12-12 19:00 | 98 | 95.8d |  |  | Antonio | 10h | 100 |
| 101 | 2.4.2.3.2 | Integrar tablas asignadas | 5h | 2016-12-09 17:00 | 2016-12-12 12:00 |  | 96.3d |  |  | Jorge | 5h | 50 |
| 102 | 2.4.2.3.3 | Integrar tablas asignadas | 5h | 2016-12-09 17:00 | 2016-12-12 12:00 | 95 | 96.3d |  |  | Ricardo | 5h | 50 |
| 103 | 2.4.2.3.4 | Integrar tablas asignadas | 5h | 2016-12-09 17:00 | 2016-12-12 12:00 | 96 | 96.3d |  |  | Nahiara | 5h | 50 |
| 104 | 2.4.2.3.5 | Integrar tablas asignadas | 5h | 2016-12-09 17:00 | 2016-12-12 12:00 | 97 | 96.3d |  |  | Manuel | 5h | 50 |

| ID | WBS | Task | Duration | Start | Finish | Predecessors | Total slack | Free slack | Constraint | Resources | Work | Cost |
| --- | --- | --- | --- | --- | --- | --- | --- | --- | --- | --- | --- | --- |
| 105 | 2.4.3 | **SMA** | 0.4d | 2016-12-02 09:00 | 2016-12-02 13:00 |  | 101d |  |  |  | 4h | 40 |
| 106 | 2.4.3.1 | **Documentación** | 0.4d | 2016-12-02 09:00 | 2016-12-02 13:00 |  | 101d |  |  |  | 4h | 40 |
| 107 | 2.4.3.1.1 | Explicar el mapa de navegación entre interfaces | 4h | 2016-12-02 09:00 | 2016-12-02 13:00 |  | 101d |  | start no earlier than 2016-12-02 09:00 | Jorge | 4h | 40 |
| 108 | 2.4.4 | **NM** | 0.3d | 2016-12-02 09:00 | 2016-12-02 12:00 |  | 101.1d |  |  |  | 3h | 30 |
| 109 | 2.4.4.1 | **Contextualización** | 0.3d | 2016-12-02 09:00 | 2016-12-02 12:00 |  | 101.1d |  |  |  | 3h | 30 |
| 110 | 2.4.4.1.1 | Contextualizar modelo de datos | 3h | 2016-12-02 09:00 | 2016-12-02 12:00 |  | 101.1d | 0.5d | start no earlier than 2016-12-02 09:00 | Ricardo | 3h | 30 |
| 111 | 2.4.5 | **TAG** | 1.9d | 2016-12-01 09:00 | 2016-12-05 12:00 |  | 0d |  |  |  | 3h | 30 |
| 112 | 2.4.5.1 | **Visualización** | 0.8d? | 2016-12-01 09:00 | 2016-12-01 19:00 |  |  |  |  |  | 3h | 30 |
| 113 | 2.4.5.1.1 | Hacer un visualizador OpenGL 4.X simple, con datos por programa. Shader básico. | 3h | 2016-12-05 09:00 | 2016-12-05 12:00 | 110 | 101.3d |  | start no earlier than 2016-12-05 09:00 | Ricardo | 3h | 30 |
| 114 | 2.5 | **Iteracion 5** | 4.8d | 2016-12-14 11:00 | 2016-12-22 11:00 | 83 | 91d |  |  |  | 20h | 200 |
| 115 | 2.5.1 | **PM** | 1d | 2016-12-21 09:00 | 2016-12-22 11:00 |  | 91d |  |  |  | 10h | 100 |
| 116 | 2.5.1.1 | **Seguimiento** | 1d | 2016-12-21 09:00 | 2016-12-22 11:00 |  | 91d |  |  |  | 10h | 100 |
| 117 | 2.5.1.1.1 | Registrar de tiempos y % de realización de tareas en Project | 4h | 2016-12-21 09:00 | 2016-12-21 13:00 |  | 91d | 0d | start no earlier than 2016-12-21 09:00 | Nahiara | 4h | 40 |
| 118 | 2.5.1.1.2 | Comparar la planificación prevista y real en Project hito 1. | 4h | 2016-12-21 15:00 | 2016-12-21 19:00 | 117 | 91d | 0d | start no earlier than 2016-12-20 09:00 | Nahiara | 4h | 40 |
| 119 | 2.5.1.1.3 | Confeccionar Informes de iteración e informe resumen de Hito 1 | 2h | 2016-12-22 09:00 | 2016-12-22 11:00 | 118 | 91d |  | start no earlier than 2016-12-21 09:00 | Nahiara | 2h | 20 |
| 120 | 2.5.2 | **SMBI** | 3.9d | 2016-12-14 11:00 | 2016-12-21 10:00 |  | 91.9d |  |  |  | 10h | 100 |
| 121 | 2.5.2.1 | **Pruebas** | 0.3d | 2016-12-14 11:00 | 2016-12-14 16:00 |  | 95.5d |  |  |  | 3h | 30 |
| 122 | 2.5.2.1.1 | Hacer pruebas unitarias | 3h | 2016-12-14 11:00 | 2016-12-14 16:00 |  | 95.5d |  |  | Antonio | 3h | 30 |
| 123 | 2.5.2.2 | **Desarrollo** | 1.7d | 2016-12-19 09:00 | 2016-12-21 10:00 |  | 91.9d |  |  |  | 7h | 70 |
| 124 | 2.5.2.2.1 | Implementación API RESTFULL | 6h | 2016-12-19 09:00 | 2016-12-19 17:00 |  | 92.9d | 1d | start no earlier than 2016-12-19 09:00 | Antonio | 6h | 60 |
| 125 | 2.5.2.2.2 | Hacer documentacion | 1h | 2016-12-21 09:00 | 2016-12-21 10:00 | 124 | 91.9d |  | start no earlier than 2016-12-21 09:00 | Antonio | 1h | 10 |
| 126 | 3 | **HITO 2** | 21.6d | 2016-12-26 09:00 | 2017-01-30 19:00 |  |  |  |  |  | 123.5h | 1,235 |
| 127 | 3.1 | **Iteración 1** | 8.15d? | 2016-12-26 09:00 | 2017-01-09 10:30 |  | 0d |  |  |  | 28.5h | 285 |
| 128 | 3.1.1 | **PM** | 8.15d? | 2016-12-26 09:00 | 2017-01-09 10:30 |  | 7.85d |  |  |  | 14.5h | 145 |
| 129 | 3.1.1.1 | **Especificación** | 0.2d | 2016-12-26 09:00 | 2016-12-26 11:00 |  | 14.85d | 0.6d |  |  | 2h | 20 |
| 130 | 3.1.1.1.1 | Revisar especificación proyecto. | 2h | 2016-12-26 09:00 | 2016-12-26 11:00 |  | 14.85d | 0.6d |  | Nahiara | 2h | 20 |

| ID | WBS | Task | Duration | Start | Finish | Predecessors | Total slack | Free slack | Constraint | Resources | Work | Cost |
| --- | --- | --- | --- | --- | --- | --- | --- | --- | --- | --- | --- | --- |
| 131 | 3.1.1.2 | **Estimación** | 0.3d | 2016-12-27 09:00 | 2016-12-27 12:00 | 129 | 14.25d | 0d |  |  | 3h | 30 |
| 132 | 3.1.1.2.1 | Reestimar proyecto | 3h | 2016-12-27 09:00 | 2016-12-27 12:00 | 130 | 14.25d | 0d | start no earlier than 2016-12-27 09:00 | Nahiara | 3h | 30 |
| 133 | 3.1.1.3 | **Planificación** | 0.65d | 2016-12-27 12:00 | 2016-12-28 10:30 | 131 | 14.25d |  |  |  | 6.5h | 65 |
| 134 | 3.1.1.3.1 | **Detallar plan iteraciones del mes de Enero** | 0.65d | 2016-12-27 12:00 | 2016-12-28 10:30 |  | 14.25d |  |  |  | 6.5h | 65 |
| 135 | 3.1.1.3.1.1 | Creación Subtareas y precedencias en Project | 3.5h | 2016-12-27 12:00 | 2016-12-27 17:30 | 132 | 14.25d | 0d | start no earlier than 2016-12-27 09:00 | Nahiara | 3.5h | 35 |
| 136 | 3.1.1.3.1.2 | Asignar recursos a las tareas en Project | 3h | 2016-12-27 17:30 | 2016-12-28 10:30 | 135 | 14.25d |  | start no earlier than 2016-12-27 09:00 | Nahiara | 3h | 30 |
| 137 | 3.1.1.4 | **Elaborar la presentación del Hito 1** | 0.15d? | 2017-01-09 09:00 | 2017-01-09 10:30 |  | 7.85d |  |  |  | 3h | 30 |
| 138 | 3.1.1.4.1 | Hacer PowerPoint | 1.5h? | 2017-01-09 09:00 | 2017-01-09 10:30 |  | 7.85d |  | start no earlier than 2017-01-09 09:00 | Nahiara; Jorge; Manuel; Ricardo; Antonio | 3h | 30 |
| 139 | 3.1.2 | **SMBI** | 4d? | 2016-12-26 09:00 | 2016-12-30 19:00 |  | 0d |  |  |  | 10h | 100 |
| 140 | 3.1.2.1 | **Cambio tecnología** | 4d | 2016-12-26 09:00 | 2016-12-30 19:00 |  |  |  |  |  | 10h | 100 |
| 141 | 3.1.2.1.1 | Migrar lenguaje de desarrollo a PHP | 5h | 2016-12-30 12:00 | 2016-12-30 19:00 |  | 84.8d | 4.15d | finish no earlier than 2016-12-30 19:00 | Antonio; Manuel | 10h | 100 |
| 142 | 3.1.3 | **NM** | 0.4d | 2016-12-26 09:00 | 2016-12-26 13:00 |  | 15.6d |  |  |  | 4h | 40 |
| 143 | 3.1.3.1 | Modelo para la integración de datos | 4h | 2016-12-26 09:00 | 2016-12-26 13:00 |  | 15.6d |  |  | Ricardo | 4h | 40 |
| 144 | 3.2 | **Iteración 2** | 13.45d? | 2017-01-09 10:30 | 2017-01-30 19:00 | 127 | 7.85d |  |  |  | 95h | 950 |
| 145 | 3.2.1 | **SDM** | 4d | 2017-01-09 10:30 | 2017-01-16 10:30 |  | 8.95d | 0d |  |  | 27.5h | 275 |
| 146 | 3.2.1.1 | **Memoria ABP** | 2.6d | 2017-01-09 10:30 | 2017-01-12 12:30 |  | 10.35d |  |  |  | 24.5h | 245 |
| 147 | 3.2.1.1.1 | **Apartado 1** | 0.2d | 2017-01-09 10:30 | 2017-01-09 12:30 |  | 11.3d | 0d |  |  | 2h | 20 |
| 148 | 3.2.1.1.1.1 | Describir proyecto | 2h | 2017-01-09 10:30 | 2017-01-09 12:30 |  | 11.3d | 0.5d | start no earlier than 2017-01-09 10:30 | Nahiara | 2h | 20 |
| 149 | 3.2.1.1.2 | **Apartado 2** | 0.2d | 2017-01-09 12:30 | 2017-01-09 16:30 | 147 | 11.3d | 0d |  |  | 2h | 20 |
| 150 | 3.2.1.1.2.1 | Explicar diseño de aplicación | 2h | 2017-01-09 12:30 | 2017-01-09 16:30 |  | 11.3d | 0.3d | start no earlier than 2017-01-09 09:00 | Jorge | 2h | 20 |
| 151 | 3.2.1.1.3 | **Apartado 3** | 0.3d | 2017-01-09 16:30 | 2017-01-10 09:30 | 149 | 11.3d | 0d |  |  | 3h | 30 |
| 152 | 3.2.1.1.3.1 | Explicar marco tecnológico | 3h | 2017-01-09 16:30 | 2017-01-10 09:30 |  | 11.3d | 0d | start no earlier than 2017-01-09 09:00 | Manuel | 3h | 30 |
| 153 | 3.2.1.1.4 | **Descripcion de objetivos SDM en ABP** | 0.85d | 2017-01-10 09:30 | 2017-01-11 10:00 | 151 | 11.05d | 0.7d |  |  | 14h | 140 |
| 154 | 3.2.1.1.4.1 | Explicar uso de CMS | 2h | 2017-01-10 09:30 | 2017-01-10 11:30 | 148 | 11.3d | 0d | start no earlier than 2017-01-09 09:00 | Nahiara | 2h | 20 |
| 155 | 3.2.1.1.4.2 | Explicar uso de posicionamiento y difusion | 5h | 2017-01-10 09:30 | 2017-01-10 16:30 | 150 | 11.4d | 1.2d | start no earlier than 2017-01-09 09:00 | Jorge | 5h | 50 |
| 156 | 3.2.1.1.4.3 | Usar transformacion de formatos | 4h | 2017-01-10 11:30 | 2017-01-10 17:30 | 154 | 11.3d | 0.95d | start no earlier than 2017-01-09 09:00 | Nahiara | 4h | 40 |
| 157 | 3.2.1.1.4.4 | Explicar el consumo de API's | 2h | 2017-01-10 09:30 | 2017-01-10 11:30 | 152 | 11.6d | 0.55d | start no earlier than 2017-01-09 09:00 | Manuel | 2h | 20 |
| 158 | 3.2.1.1.4.5 | Explicar la autorizacion Oauth 2.0 | 1h | 2017-01-11 09:00 | 2017-01-11 10:00 | 157 | 11.05d |  | start no earlier than 2017-01-11 09:00 | Ricardo | 1h | 10 |

| ID | WBS | Task | Type | Duration | Start | Finish | Predecessors | Total slack | Free slack | Constraint | Resources | Work | Cost |
| --- | --- | --- | --- | --- | --- | --- | --- | --- | --- | --- | --- | --- | --- |
| 159 | 3.2.1.1.5 | **Apartado 5** |  | 0.15d | 2017-01-12 09:00 | 2017-01-12 10:30 | 153 | 10.35d | 0d |  |  | 1.5h | 15 |
| 160 | 3.2.1.1.5.1 | Explicar objetivos cumplidos |  | 1.5h | 2017-01-12 09:00 | 2017-01-12 10:30 | 156 | 10.35d | 0.1d | start no earlier than 2017-01-12 09:00 | Nahiara | 1.5h | 15 |
| 161 | 3.2.1.1.6 | **Conclusión** |  | 0.1d | 2017-01-12 10:30 | 2017-01-12 11:30 | 159 | 10.35d | 0d |  |  | 1h | 10 |
| 162 | 3.2.1.1.6.1 | Escribir conclusion de la memoria |  | 1h | 2017-01-12 10:30 | 2017-01-12 11:30 | 155 | 10.35d |  |  | Jorge | 1h | 10 |
| 163 | 3.2.1.1.7 | **Apartado 7** |  | 0.1d | 2017-01-12 11:30 | 2017-01-12 12:30 | 161 | 10.35d |  |  |  | 1h | 10 |
| 164 | 3.2.1.1.7.1 | Explicar Reparto del trabajo |  | 1h | 2017-01-12 11:30 | 2017-01-12 12:30 | 160 | 10.35d |  |  | Nahiara | 1h | 10 |
| 165 | 3.2.1.2 | **Presentación** |  | 0.15d | 2017-01-16 09:00 | 2017-01-16 10:30 |  | 8.95d |  |  |  | 3h | 30 |
| 166 | 3.2.1.2.1 | Hacer powerpoint para presentacion |  | 1.5h | 2017-01-16 09:00 | 2017-01-16 10:30 |  | 8.95d |  | start no earlier than 2017-01-16 09:00 | Nahiara; Ricardo | 3h | 30 |
| 167 | 3.2.2 | **SMA** |  | 0.5d | 2017-01-16 10:30 | 2017-01-16 17:30 | 145 | 8.95d |  |  |  | 5h | 50 |
| 168 | 3.2.2.1 | Documento de SEO: definición de aspectos SEO como son palabras clave, estilos de textos, posiciones de texto, como se va a potenciar esto (landing, blog, etc…), URL amigables |  | 5h | 2017-01-16 10:30 | 2017-01-16 17:30 |  | 8.95d |  |  | Jorge | 5h | 50 |
| 169 | 3.2.3 | **PM** |  | 1d | 2017-01-28 09:00 | 2017-01-30 11:00 |  | 0.6d |  |  |  | 10h | 100 |
| 170 | 3.2.3.1 | **Seguimiento** |  | 1d | 2017-01-28 09:00 | 2017-01-30 11:00 |  | 0.6d |  |  |  | 10h | 100 |
| 171 | 3.2.3.1.1 | Registrar de tiempos y % de realización de tareas en Project |  | 5h | 2017-01-28 09:00 | 2017-01-28 16:00 |  | 0.6d | 0d | start no earlier than 2017-01-28 09:00 | Nahiara | 5h | 50 |
| 172 | 3.2.3.1.2 | Comparar la planificación prevista y real en Project hito 2 |  | 3h | 2017-01-28 16:00 | 2017-01-28 19:00 | 171 | 0.6d | 0d | start no earlier than 2017-01-28 09:00 | Nahiara | 3h | 30 |
| 173 | 3.2.3.1.3 | Confeccionar Informes de iteración e informe resumen de Hito 2 |  | 2h | 2017-01-30 09:00 | 2017-01-30 11:00 | 172 | 0.6d |  | start no earlier than 2017-01-28 09:00 | Nahiara | 2h | 20 |
| 174 | 3.2.4 | **SMBI** |  | 0d | 2017-01-09 10:30 | 2017-01-09 10:30 |  | 13.45d |  |  |  |  |  |
| 175 | 3.2.4.1 | **Pruebas** | inactive | 14.45d? | 2017-01-09 10:30 | 2017-02-01 11:00 |  | -1d | 0d |  |  | 110h | 1,100 |
| 176 | 3.2.4.1.1 | Hacer pruebas de integración | inactive | 2d? | 2017-01-09 10:30 | 2017-01-11 16:30 | 141 | 7.45d | 0d |  | Antonio; Manuel | 40h | 400 |
| 177 | 3.2.4.1.2 | Hacer pruebas funcionales | inactive | 2d | 2017-01-11 16:30 | 2017-01-16 10:30 | 176 | 7.45d |  |  | Antonio; Manuel | 30h | 300 |
| 178 | 3.2.4.1.3 | Hacer pruebas de regresión | inactive | 1d? | 2017-01-28 17:00 | 2017-01-30 19:00 | 177 | -1d | 0d | finish no earlier than 2017-01-30 19:00 | Antonio; Manuel | 20h | 200 |
| 179 | 3.2.4.1.4 | Hacer pruebas de carga y rendimiento | inactive | 1d? | 2017-01-31 09:00 | 2017-02-01 11:00 | 178 | -1d | 0d | finish no earlier than 2017-01-30 19:00 | Antonio; Manuel | 20h | 200 |
| 180 | 3.2.4.2 | **Validación** | inactive | 1d? | 2017-01-28 17:00 | 2017-01-30 19:00 |  | 0d |  |  |  | 20h | 200 |
| 181 | 3.2.4.2.1 | Validar el funcionamiento del backend (Pruebas API Rest Full) | inactive | 1d? | 2017-01-28 17:00 | 2017-01-30 19:00 |  | 0d |  | finish no earlier than 2017-01-30 19:00 | Antonio; Manuel | 20h | 200 |
| 182 | 3.2.5 | **TAG** |  | 0.8d | 2017-01-30 09:00 | 2017-01-30 19:00 |  | 0d |  |  |  | 8h | 80 |
| 183 | 3.2.5.1 | **Gestión de recursos** |  | 0.8d | 2017-01-30 09:00 | 2017-01-30 19:00 |  | 0d |  |  |  | 8h | 80 |
| 184 | 3.2.5.1.1 | Parser de objetos en multiples formatos, salida en modo texto |  | 8h | 2017-01-30 09:00 | 2017-01-30 19:00 |  | 0d |  | finish no earlier than 2017-01-30 19:00 | Antonio | 8h | 80 |

| ID | WBS | Task | Type | Duration | Start | Finish | Predecessors | Total slack | Constraint | Resources | Work | Cost |
| --- | --- | --- | --- | --- | --- | --- | --- | --- | --- | --- | --- | --- |
| 185 | 3.2.5.2 | **Visualización** | inactive | 4d? | 2017-01-25 09:00 | 2017-01-30 19:00 |  | 0d |  |  | 40h | 400 |
| 186 | 3.2.5.2.1 | Visualizador OpenGL 4.X simple, con datos por programa. Shader básico. | inactive | 40h? | 2017-01-25 09:00 | 2017-01-30 19:00 |  | 0d | finish no earlier than 2017-01-30 19:00 | Antonio | 40h | 400 |
| 187 | 3.2.6 | **NM** |  | 0.25d | 2017-01-19 09:00 | 2017-01-19 11:30 |  | 6.95d |  |  | 2.5h | 25 |
| 188 | 3.2.6.1 | Incorporación de open data, API's, y otras fuentes heterogéneas |  | 2.5h | 2017-01-19 09:00 | 2017-01-19 11:30 |  | 6.95d | start no earlier than 2017-01-19 09:00 | Ricardo | 2.5h | 25 |
| 189 | 3.2.7 | **SMA** |  | 5.6d | 2017-01-23 09:00 | 2017-01-30 19:00 |  |  |  |  | 42h | 420 |
| 190 | 3.2.7.1 | Integración Front-Back: documento de relación entre back-end y front-end |  | 2.4d | 2017-01-25 09:00 | 2017-01-27 19:00 |  | 68.8d | finish no earlier than 2017-01-27 19:00 | Ricardo | 24h | 240 |
| 191 | 3.2.7.2 | Arquitectura tecnológica: documento sobre toma de decisión, versiones, codificación, internacionalización (varias lenguas), instalación sobre servidor de frameworks... |  | 2h | 2017-01-27 09:00 | 2017-01-27 11:00 |  | 69.4d | start no earlier than 2017-01-27 09:00 | Nahiara; Antonio | 2h | 20 |
| 192 | 3.2.7.3 | Guía de estilos: documento detallando la imagen corporativa del servicio (colores, estilos, esencia para la experiencia de usuario, consideraciones de usabilidad y accesibilidad) |  | 1.6d? | 2017-01-28 09:00 | 2017-01-30 19:00 |  | 67.2d | finish no earlier than 2017-01-30 19:00 | Jorge | 16h | 160 |
| 193 | 4 | **HITO 3** |  | 37.6d? | 2017-01-31 09:00 | 2017-04-05 19:00 | 126 | 0d |  |  | 30h | 300 |
| 194 | 4.1 | **PM** |  | 37.6d | 2017-01-31 09:00 | 2017-04-05 19:00 |  | 0d |  |  |  |  |
| 195 | 4.1.1 | **Planificación** |  | 37.6d | 2017-01-31 09:00 | 2017-04-05 19:00 |  | 0d |  |  |  |  |
| 196 | 4.1.1.1 | **Detallar plan iteraciones del mes de Febrero-Marzo** |  | 37.6d | 2017-01-31 09:00 | 2017-04-05 19:00 |  | 0d |  |  |  |  |
| 197 | 4.1.1.1.1 | Creación Subtareas y precedencias en Project |  | 37.6d | 2017-01-31 09:00 | 2017-04-05 19:00 |  | 0d |  |  |  |  |
| 198 | 4.1.1.1.2 | Asignar recursos a las tareas en Project. |  | 37.6d | 2017-01-31 09:00 | 2017-04-05 19:00 |  | 0d |  |  |  |  |
| 199 | 4.1.2 | **Seguimiento** |  | 37.6d | 2017-01-31 09:00 | 2017-04-05 19:00 |  | 0d |  |  |  |  |
| 200 | 4.1.2.1 | Registrar de tiempos y % de realización de tareas en Project |  | 37.6d | 2017-01-31 09:00 | 2017-04-05 19:00 |  | 0d |  |  |  |  |
| 201 | 4.1.2.2 | Comparar la planificación prevista y real en Project hito 3 |  | 37.6d | 2017-01-31 09:00 | 2017-04-05 19:00 |  | 0d |  |  |  |  |
| 202 | 4.1.2.3 | Confeccionar Informes de iteración e informe resumen de Hito 3 |  | 37.6d | 2017-01-31 09:00 | 2017-04-05 19:00 |  | 0d |  |  |  |  |
| 203 | 4.1.3 | **Presentación** |  | 37.6d | 2017-01-31 09:00 | 2017-04-05 19:00 |  | 0d |  |  |  |  |
| 204 | 4.1.3.1 | Elaborar la presentación del Hito 3 |  | 37.6d | 2017-01-31 09:00 | 2017-04-05 19:00 |  | 0d |  |  |  |  |
| 205 | 4.1.3.2 | Exponer la presentación del Hito 3 |  | 37.6d | 2017-01-31 09:00 | 2017-04-05 19:00 |  | 0d |  |  |  |  |
| 206 | 4.2 | **TAG** |  | 37.6d | 2017-01-31 09:00 | 2017-04-05 19:00 |  | 0d |  |  |  |  |
| 207 | 4.2.1 | **Árbol de la escena** |  | 37.6d | 2017-01-31 09:00 | 2017-04-05 19:00 |  | 0d |  |  |  |  |
| 208 | 4.2.1.1 | Tipos de datos para nodos (completo) y entidades (sólo clase padre; clases hijas sin contenido) |  | 37.6d | 2017-01-31 09:00 | 2017-04-05 19:00 |  | 0d |  |  |  |  |
| 209 | 4.2.1.2 | Construcción del árbol |  | 37.6d | 2017-01-31 09:00 | 2017-04-05 19:00 |  | 0d |  |  |  |  |
| 210 | 4.2.1.3 | Recorrido del arbol |  | 37.6d | 2017-01-31 09:00 | 2017-04-05 19:00 |  | 0d |  |  |  |  |
| 211 | 4.2.1.4 | Salida en modo texto |  | 37.6d | 2017-01-31 09:00 | 2017-04-05 19:00 |  | 0d |  |  |  |  |
| 212 | 4.2.1.5 | Tipos de datos para entidades de tipo transformacion |  | 37.6d | 2017-01-31 09:00 | 2017-04-05 19:00 |  | 0d |  |  |  |  |
| 213 | 4.2.1.6 | Tipos de datos para entidades de tipo cámara y luz (cámaras y luces de dos tipos). Salida en modo texto |  | 37.6d | 2017-01-31 09:00 | 2017-04-05 19:00 |  | 0d |  |  |  |  |
| 214 | 4.2.1.7 | Tipos de datos para entidades de tipo malla. Salida en modo texto |  | 37.6d | 2017-01-31 09:00 | 2017-04-05 19:00 |  | 0d |  |  |  |  |
| 215 | 4.2.1.8 | Tipos de datos para entidades de tipo animación (cuadro a cuadro). Salida en modo texto |  | 37.6d | 2017-01-31 09:00 | 2017-04-05 19:00 |  | 0d |  |  |  |  |

| ID | WBS | Task | Duration | Start | Finish | Total slack |
| --- | --- | --- | --- | --- | --- | --- |
| 216 | 4.2.2 | **Gestor de recursos** | 37.6d | 2017-01-31 09:00 | 2017-04-05 19:00 | 0d |
| 217 | 4.2.2.1 | Carga de modelos en formato múltiple en las entidades de tipo malla | 37.6d | 2017-01-31 09:00 | 2017-04-05 19:00 | 0d |
| 218 | 4.2.2.2 | Carga de varios ficheros para animación. Salida en modo texto | 37.6d | 2017-01-31 09:00 | 2017-04-05 19:00 | 0d |
| 219 | 4.2.3 | **Visualización** | 37.6d | 2017-01-31 09:00 | 2017-04-05 19:00 | 0d |
| 220 | 4.2.3.1 | Visualizador OpenGL 4.X de las entidades tipo malla. Shader básico. Integración con el motor. Sin materiales, texturas, cámara ni luces | 37.6d | 2017-01-31 09:00 | 2017-04-05 19:00 | 0d |
| 221 | 4.2.3.2 | Visualizador OpenGL 4.X de las entidades tipo malla. Shader básico. Con cámaras y luces de varios tipos. Visualización con registro de cámaras y luces. | 37.6d | 2017-01-31 09:00 | 2017-04-05 19:00 | 0d |
| 222 | 4.2.4 | **Gestor de recursos** | 37.6d | 2017-01-31 09:00 | 2017-04-05 19:00 | 0d |
| 223 | 4.2.4.1 | Carga de materiales y texturas. Salida en modo texto | 37.6d | 2017-01-31 09:00 | 2017-04-05 19:00 | 0d |
| 224 | 4.2.5 | **Visualización** | 37.6d | 2017-01-31 09:00 | 2017-04-05 19:00 | 0d |
| 225 | 4.2.5.1 | Visualizador OpenGL 4.X de las entidades tipo malla. Shader básico. Añadiendo materiales y texturas. | 37.6d | 2017-01-31 09:00 | 2017-04-05 19:00 | 0d |
| 226 | 4.2.6 | **Fachada** | 37.6d | 2017-01-31 09:00 | 2017-04-05 19:00 | 0d |
| 227 | 4.2.6.1 | Creación de una fachada entre el motor y la aplicación | 37.6d | 2017-01-31 09:00 | 2017-04-05 19:00 | 0d |
| 228 | 4.2.7 | **Visualización** | 37.6d | 2017-01-31 09:00 | 2017-04-05 19:00 | 0d |
| 229 | 4.2.7.1 | Visualizador OpenGL 4.X con tres shaders avanzados | 37.6d | 2017-01-31 09:00 | 2017-04-05 19:00 | 0d |
| 230 | 4.3 | **SMA** | 37.6d | 2017-01-31 09:00 | 2017-04-05 19:00 | 0d |
| 231 | 4.3.1 | **Implementación front-end más documentación** | 37.6d | 2017-01-31 09:00 | 2017-04-05 19:00 | 0d |
| 232 | 4.3.1.1 | De código (documentación sobre estructura de código y particularidades especiales como por ejemplo algoritmos de optimización, mejoras, etc) | 37.6d | 2017-01-31 09:00 | 2017-04-05 19:00 | 0d |
| 233 | 4.3.2 | Implementación de las funcionalidades en front-end (relación de las interfaces y funcionalidades que se están implementando y en que momento están implementadas) | 37.6d | 2017-01-31 09:00 | 2017-04-05 19:00 | 0d |
| 234 | 4.3.3 | Informe | 37.6d | 2017-01-31 09:00 | 2017-04-05 19:00 | 0d |
| 235 | 4.4 | **NM** | 37.6d | 2017-01-31 09:00 | 2017-04-05 19:00 | 0d |
| 236 | 4.4.1 | Despliegue de la infraestructura del proyecto | 37.6d | 2017-01-31 09:00 | 2017-04-05 19:00 | 0d |
| 237 | 4.4.2 | Definición de cuadros de mando e implementación | 37.6d | 2017-01-31 09:00 | 2017-04-05 19:00 | 0d |
| 238 | 4.4.3 | Definición de KPI's implementación | 37.6d | 2017-01-31 09:00 | 2017-04-05 19:00 | 0d |
| 239 | 4.4.4 | Valoración de los cuadros de mando y KPI's definidos e incorporación de nuevos elementos según datos | 37.6d | 2017-01-31 09:00 | 2017-04-05 19:00 | 0d |
| 240 | 4.4.5 | Informe | 37.6d | 2017-01-31 09:00 | 2017-04-05 19:00 | 0d |

| ID | WBS | Task | Duration | Start | Finish | Predecessors | Total slack | Constraint | Resources | Work | Cost |
| --- | --- | --- | --- | --- | --- | --- | --- | --- | --- | --- | --- |
| 241 | 4.5 | **PD** | 37.6d? | 2017-01-31 09:00 | 2017-04-05 19:00 |  | 0d |  |  | 10h | 100 |
| 242 | 4.5.1 | Cartel del proyecto | 5h? | 2017-01-31 09:00 | 2017-01-31 16:00 |  | 37.1d | finish no earlier than 2017-01-17 19:00 | Antonio; Jorge | 10h | 100 |
| 243 | 4.5.2 | Trailer del proyecto | 37.6d | 2017-01-31 09:00 | 2017-04-05 19:00 |  | 0d |  |  |  |  |
| 244 | 4.6 | **ELE** | 2d? | 2017-01-31 09:00 | 2017-02-02 13:00 |  | 35.6d |  |  | 20h | 200 |
| 245 | 4.6.1 | **Tarea 2** | 2d? | 2017-01-31 09:00 | 2017-02-02 13:00 |  | 35.6d |  |  | 20h | 200 |
| 246 | 4.6.1.1 | Hacer guión | 1d? | 2017-01-31 09:00 | 2017-02-01 11:00 |  | 36.6d |  | Ricardo | 10h | 100 |
| 247 | 4.6.1.2 | Hacer guión gráfico | 1d? | 2017-02-01 11:00 | 2017-02-02 13:00 |  | 35.6d |  | Ricardo | 10h | 100 |
| 248 | 4.6.2 | **Tarea 3** | 1d? | 2017-01-31 09:00 | 2017-02-01 11:00 |  | 36.6d |  |  |  |  |
| 249 | 4.6.2.1 | Definir tecnologias | 1d? | 2017-01-31 09:00 | 2017-02-01 11:00 |  | 36.6d |  |  |  |  |
| 250 | 4.6.3 | **Tarea 4** | 1d? | 2017-01-31 09:00 | 2017-02-01 11:00 |  | 36.6d |  |  |  |  |
| 251 | 4.6.3.1 | Crear video | 1d? | 2017-01-31 09:00 | 2017-02-01 11:00 |  | 36.6d |  |  |  |  |
| 252 | 5 | **HITO 4** | 29.6d? | 2017-04-06 09:00 | 2017-05-26 19:00 | 193 | 0d |  |  |  |  |
| 253 | 5.1 | **PM** | 29.6d | 2017-04-06 09:00 | 2017-05-26 19:00 |  | 0d |  |  |  |  |
| 254 | 5.1.1 | **Planificación** | 29.6d | 2017-04-06 09:00 | 2017-05-26 19:00 |  | 0d |  |  |  |  |
| 255 | 5.1.1.1 | **Detallar plan iteraciones del mes de Abril-Mayo** | 29.6d | 2017-04-06 09:00 | 2017-05-26 19:00 |  | 0d |  |  |  |  |
| 256 | 5.1.1.1.1 | Creación Subtareas y precedencias en Project | 29.6d | 2017-04-06 09:00 | 2017-05-26 19:00 |  | 0d |  |  |  |  |
| 257 | 5.1.1.1.2 | Asignar recursos a las tareas en Project | 29.6d | 2017-04-06 09:00 | 2017-05-26 19:00 |  | 0d |  |  |  |  |
| 258 | 5.1.2 | **Seguimiento** | 29.6d | 2017-04-06 09:00 | 2017-05-26 19:00 |  | 0d |  |  |  |  |
| 259 | 5.1.2.1 | Registrar de tiempos y % de realización de tareas en Project | 29.6d | 2017-04-06 09:00 | 2017-05-26 19:00 |  | 0d |  |  |  |  |
| 260 | 5.1.2.2 | Comparar la planificación prevista y real en Project hito 4 | 29.6d | 2017-04-06 09:00 | 2017-05-26 19:00 |  | 0d |  |  |  |  |
| 261 | 5.1.2.3 | Confeccionar Informes de iteración e informe resumen de Hito 4 | 29.6d | 2017-04-06 09:00 | 2017-05-26 19:00 |  | 0d |  |  |  |  |
| 262 | 5.1.3 | **Presentación** | 29.6d | 2017-04-06 09:00 | 2017-05-26 19:00 |  | 0d |  |  |  |  |
| 263 | 5.1.3.1 | Elaborar la presentación del Hito 4 | 29.6d | 2017-04-06 09:00 | 2017-05-26 19:00 |  | 0d |  |  |  |  |
| 264 | 5.1.3.2 | Exponer la presentación del Hito 4 | 29.6d | 2017-04-06 09:00 | 2017-05-26 19:00 |  | 0d |  |  |  |  |

| ID | WBS | Task | Duration | Start | Finish | Total slack | Constraint |
| --- | --- | --- | --- | --- | --- | --- | --- |
| 265 | 5.2 | **TAG** | 29.6d | 2017-04-06 09:00 | 2017-05-26 19:00 | 0d |  |
| 266 | 5.2.1 | **IGC** | 29.6d | 2017-04-06 09:00 | 2017-05-26 19:00 | 0d |  |
| 267 | 5.2.1.1 | **Aplicación** | 29.6d | 2017-04-06 09:00 | 2017-05-26 19:00 | 0d |  |
| 268 | 5.2.1.1.1 | Cargador de modelos | 29.6d | 2017-04-06 09:00 | 2017-05-26 19:00 | 0d |  |
| 269 | 5.2.1.1.2 | Movimiento del modelo, de las luces y de la cámara | 29.6d | 2017-04-06 09:00 | 2017-05-26 19:00 | 0d |  |
| 270 | 5.2.1.1.3 | Cambio de modelo, materiales y texturas | 29.6d | 2017-04-06 09:00 | 2017-05-26 19:00 | 0d |  |
| 271 | 5.2.1.1.4 | Animaciones | 29.6d | 2017-04-06 09:00 | 2017-05-26 19:00 | 0d |  |
| 272 | 5.2.1.1.5 | Integración con el motor | 29.6d | 2017-04-06 09:00 | 2017-05-26 19:00 | 0d |  |
| 273 | 5.2.2 | Optimizaciones del motor | 29.6d | 2017-04-06 09:00 | 2017-05-26 19:00 | 0d |  |
| 274 | 5.2.3 | Efectos visuales | 29.6d | 2017-04-06 09:00 | 2017-05-26 19:00 | 0d |  |
| 275 | 5.3 | **SMA** | 29.6d | 2017-04-06 09:00 | 2017-05-26 19:00 | 0d |  |
| 276 | 5.3.1 | Documento de pruebas donde se documenta las pruebas de las funcionalidades principales (por lo menos las interfaces principales) | 29.6d | 2017-04-06 09:00 | 2017-05-26 19:00 | 0d |  |
| 277 | 5.3.2 | Pruebas de la aplicación demostrando que no hay errores (falta de librerías, archivos que no se descargan, errores javascript) | 29.6d | 2017-04-06 09:00 | 2017-05-26 19:00 | 0d |  |
| 278 | 5.3.3 | Pruebas de seguridad de front end | 29.6d | 2017-04-06 09:00 | 2017-05-26 19:00 | 0d |  |
| 279 | 5.3.4 | Pruebas de rendimiento (velocidad de carga, que todo carga y no hay errores) | 29.6d | 2017-04-06 09:00 | 2017-05-26 19:00 | 0d |  |
| 280 | 5.3.5 | Validar las funcionalidades (comprobar que realmente han sido implementadas), las funcionalidades han quedado recogidas en las interfaces implementadas | 29.6d | 2017-04-06 09:00 | 2017-05-26 19:00 | 0d |  |
| 281 | 5.3.6 | Informe | 29.6d | 2017-04-06 09:00 | 2017-05-26 19:00 | 0d |  |
| 282 | 5.4 | **NM** | 29.6d | 2017-04-06 09:00 | 2017-05-26 19:00 | 0d |  |
| 283 | 5.4.1 | Validación del funcionamiento | 29.6d | 2017-04-06 09:00 | 2017-05-26 19:00 | 0d |  |
| 284 | 5.4.2 | Informe | 29.6d | 2017-04-06 09:00 | 2017-05-26 19:00 | 0d |  |
| 285 | 5.5 | **PD** | 29.6d? | 2017-04-06 09:00 | 2017-05-26 19:00 | 0d |  |
| 286 | 5.5.1 | Making of del proyecto | 29.6d | 2017-04-06 09:00 | 2017-05-26 19:00 | 0d |  |
| 287 | 5.5.2 | Creditos | 14.4d? | 2017-05-03 09:00 | 2017-05-26 19:00 | 0d | finish no earlier than 2017-05-26 19:00 |
| 288 | 5.6 | **ELE** | 1d? | 2017-04-06 09:00 | 2017-04-07 11:00 | 28.6d |  |
| 289 | 5.6.1 | **Tarea 5** | 1d? | 2017-04-06 09:00 | 2017-04-07 11:00 | 28.6d |  |
| 290 | 5.6.1.1 | Grabar audio | 1d? | 2017-04-06 09:00 | 2017-04-07 11:00 | 28.6d |  |

| ID | WBS | Task | Duration | Start | Finish | Total slack |
| --- | --- | --- | --- | --- | --- | --- |
| 291 | 5.6.2 | **Tarea 6** | 1d? | 2017-04-06 09:00 | 2017-04-07 11:00 | 28.6d |
| 292 | 5.6.2.1 | Hacer montaje | 1d? | 2017-04-06 09:00 | 2017-04-07 11:00 | 28.6d |
